# ects

Schedule from MS Project, 2013-05-31 to 2013-07-02, costs in ¥.

## Calendars

- 标准: Mon-Fri 08:00-12:00, 13:00-17:00; Sat-Sun off. Exceptions (off unless hours are given): 2013-06-01 08:00-12:00, 13:00-17:00, 2013-06-29 08:00-12:00, 13:00-17:00.

## Resources

| Resource | Rate |
| --- | --- |
| 杜乐乐 | 20 |
| 王友霞 | 15 |
| 刘一雷 | 15 |
| 王军侠 | 15 |
| 张文超 | 15 |
| 贾美娟 | 15 |
| 徐娜 | 10 |
| 裘玲玲 | 10 |
| 王云燕 | 8 |

## Schedule

| ID | WBS | Task | Duration | Start | Finish | Predecessors | Total slack | Free slack | Constraint | Resources | Work | Cost |
| --- | --- | --- | --- | --- | --- | --- | --- | --- | --- | --- | --- | --- |
| 1 | 1 | **前期准备** | 1.08d | 2013-05-31 08:00 | 2013-06-01 08:40 |  | 2.92d | 0d |  |  | 32h | 435.33 |
| 2 | 1.1 | 软件规划 | 0.25d | 2013-05-31 08:00 | 2013-05-31 10:00 |  | 2.92d | 0d | start no earlier than 2013-05-31 08:00 | 杜乐乐; 王友霞; 刘一雷; 王军侠 | 8h | 130 |
| 3 | 1.2 | 规划审查 | 0.33d | 2013-05-31 10:00 | 2013-05-31 13:40 | 2 | 2.92d | 0d |  | 杜乐乐; 刘一雷; 王友霞 | 8h | 133.33 |
| 4 | 1.3 | 资料搜集 | 0.5d | 2013-05-31 13:40 | 2013-06-01 08:40 | 3 | 2.92d |  |  | 徐娜; 裘玲玲; 王云燕; 王军侠 | 16h | 172 |
| 5 | 2 | Java Web 开发学习 | 0.56d | 2013-05-31 08:00 | 2013-05-31 13:26 | 1SS | 26.44d |  | start no earlier than 2013-05-31 08:00 | 杜乐乐; 贾美娟; 刘一雷; 裘玲玲; 王军侠; 王友霞; 王云燕; 徐娜; 张文超 | 40h | 546.67 |
| 6 | 3 | **需求开发** | 3.5d | 2013-06-04 08:00 | 2013-06-07 12:00 | 1 | 11.4d | 0.5d |  |  | 24h | 400 |
| 7 | 3.1 | 需求分析 | 0.5d | 2013-06-04 08:00 | 2013-06-04 12:00 |  | 13.4d | 0d | start no earlier than 2013-06-04 08:00 | 王友霞; 杜乐乐 | 8h | 140 |
| 8 | 3.2 | 需求确认 | 0.5d | 2013-06-04 13:00 | 2013-06-04 17:00 | 7 | 13.4d | 2d |  | 杜乐乐; 王军侠 | 8h | 140 |
| 9 | 3.3 | 编写需求规格书 | 0.5d | 2013-06-07 08:00 | 2013-06-07 12:00 | 8 | 11.4d | 0.5d | start no earlier than 2013-06-07 08:00 | 王友霞; 张文超 | 8h | 120 |
| 10 | 4 | **软件设计** | 4.5d | 2013-06-10 08:00 | 2013-06-14 12:00 | 6, 9 | 7.5d | 0.5d |  |  | 48h | 688 |
| 11 | 4.1 | 前端页面设计 | 0.6d | 2013-06-10 08:00 | 2013-06-10 13:48 |  | 10.9d | 2.4d | start no earlier than 2013-06-10 08:00 | 王军侠; 刘一雷; 王友霞; 张文超; 徐娜 | 24h | 336 |
| 12 | 4.2 | 数据库设计 | 0.5d | 2013-06-13 08:00 | 2013-06-13 12:00 | 11 | 8.5d |  | start no earlier than 2013-06-13 08:00 | 杜乐乐; 贾美娟; 裘玲玲; 王云燕 | 16h | 212 |
| 13 | 4.3 | 系统结构设计 | 0.5d | 2013-06-14 08:00 | 2013-06-14 12:00 |  | 7.5d |  | start no earlier than 2013-06-14 08:00 | 杜乐乐; 王军侠 | 8h | 140 |
| 14 | 5 | **编码实现** | 4.25d | 2013-06-17 08:00 | 2013-06-21 10:00 | 10 | 6d | 3.75d |  |  | 112h | 1,880 |
| 15 | 5.1 | web页面编码 | 0.75d | 2013-06-17 08:00 | 2013-06-17 15:00 |  | 8.25d | 1.25d | start no earlier than 2013-06-17 08:00 | 刘一雷; 王军侠; 王友霞; 杜乐乐 | 24h | 390 |
| 16 | 5.2 | 数据库建立 | 2d | 2013-06-17 08:00 | 2013-06-18 17:00 |  | 6d | 0d | start no earlier than 2013-06-17 08:00 | 杜乐乐 | 16h | 320 |
| 17 | 5.3 | 业务代码 | 2.25d | 2013-06-19 08:00 | 2013-06-21 10:00 | 16, 15 | 6d | 3.75d | start no earlier than 2013-06-06 08:00 | 杜乐乐; 王友霞; 张文超; 贾美娟 | 72h | 1,170 |
| 18 | 6 | **系统集成** | 2.25d | 2013-06-27 08:00 | 2013-06-29 10:00 | 14, 17 | 1.25d | 0.75d |  |  | 24h | 376 |
| 19 | 6.1 | 系统集成测试 | 1d | 2013-06-27 08:00 | 2013-06-27 17:00 |  | 2.25d | 1d | start no earlier than 2013-06-27 08:00 | 杜乐乐; 王友霞 | 16h | 280 |
| 20 | 6.2 | 环境测试 | 0.25d | 2013-06-29 08:00 | 2013-06-29 10:00 | 19 | 1.25d |  | start no earlier than 2013-06-29 08:00 | 杜乐乐; 徐娜; 裘玲玲; 王云燕 | 8h | 96 |
| 21 | 7 | **提交完成** | 2d | 2013-07-01 08:00 | 2013-07-02 17:00 | 18 | 0d |  |  |  | 24h | 420 |
| 22 | 7.1 | 完成文档 | 0.5d | 2013-07-01 08:00 | 2013-07-01 12:00 |  | 0.5d |  | start no earlier than 2013-06-30 08:00 | 刘一雷; 王军侠 | 8h | 120 |
| 23 | 7.2 | 系统移植 | 0.5d | 2013-07-01 08:00 | 2013-07-01 12:00 |  | 0.5d |  | start no earlier than 2013-07-01 08:00 | 王友霞; 杜乐乐 | 8h | 140 |
| 24 | 7.3 | 验收提交 | 1d | 2013-07-02 08:00 | 2013-07-02 17:00 | 23, 22 | 0d |  | start no earlier than 2013-07-02 08:00 | 杜乐乐 | 8h | 160 |

| ID | WBS | Task | Duration | Start | Finish | Predecessors | Total slack | Free slack | Constraint | Deadline | Resources | Work | Cost |
| --- | --- | --- | --- | --- | --- | --- | --- | --- | --- | --- | --- | --- | --- |
| 25 | 8 | **周例会** | 19.93d | 2013-06-01 08:40 | 2013-06-28 08:06 | 1 | 2.92d |  |  |  |  | 5h | 68.33 |
| 26 | 8.1 | 周例会 1 | 0.01d | 2013-06-01 08:40 | 2013-06-01 08:46 |  | 2.92d |  | start no later than 2013-06-05 08:00 |  | 杜乐乐; 贾美娟; 刘一雷; 裘玲玲; 王军侠; 王友霞; 王云燕; 徐娜; 张文超 | 1h | 13.67 |
| 27 | 8.2 | 周例会 2 | 0.01d | 2013-06-07 08:00 | 2013-06-07 08:06 | 26 | 20.94d | 4.99d | start no earlier than 2013-06-07 08:00 | 2013-12-18 17:00 | 杜乐乐; 贾美娟; 刘一雷; 裘玲玲; 王军侠; 王友霞; 王云燕; 徐娜; 张文超 | 1h | 13.67 |
| 28 | 8.3 | 周例会 3 | 0.01d | 2013-06-14 08:00 | 2013-06-14 08:06 | 27 | 15.96d | 4.99d | start no earlier than 2013-06-14 08:00 |  | 杜乐乐; 贾美娟; 刘一雷; 裘玲玲; 王军侠; 王友霞; 王云燕; 徐娜; 张文超 | 1h | 13.67 |
| 29 | 8.4 | 周例会 4 | 0.01d | 2013-06-21 08:00 | 2013-06-21 08:06 | 28 | 10.97d | 4.99d | start no earlier than 2013-06-21 08:00 |  | 杜乐乐; 贾美娟; 刘一雷; 裘玲玲; 王军侠; 王友霞; 王云燕; 徐娜; 张文超 | 1h | 13.67 |
| 30 | 8.5 | 周例会 5 | 0.01d | 2013-06-28 08:00 | 2013-06-28 08:06 | 29 | 5.99d |  | start no earlier than 2013-06-28 08:00 |  | 杜乐乐; 贾美娟; 刘一雷; 裘玲玲; 王军侠; 王友霞; 王云燕; 徐娜; 张文超 | 1h | 13.67 |
